milestone_id,name,phase,outcome,entry_conditions,exit_criteria,evidence,depends_on,target_start,target_end,historical_target,notes
M0,Project initialization,Setup,"Repository holds sources, plan, tracker, instructions and state; setup branch pushed",Owner instruction 2026-10-03,All M0 tasks Done with evidence; branch on GitHub,Files listed in T-001..T-010; remote ref,,2026-10-03,2026-10-03,,
M1,Decisions and toolchain readiness,Setup,Decisions that gate Phase 1 recorded; Android toolchain and backend services verified,M0 pushed,DG-04/09/10/11/12/13/15/16/38 decided or explicitly deferred; T-022/T-023 verified,Decision rows dated; ENVIRONMENT_CHECK.md updated,M0,2026-10-05,2026-10-11,,Week 1
M2,Foundations,P1,"Backend and mobile skeletons build, test and run in CI; PROPOSED Phase 1 contract exists","T-022, T-023, T-019 done",T-027..T-036 Done; CI green,"CI run, dev build on device",M1,2026-10-12,,,
M3,Citizen authentication,P1,A synthetic citizen signs up and signs in with an OTP from the labelled development adapter,M2,T-037..T-044 Done; T-045 in progress,Integration tests; device run,M2
M4,Live capture and encrypted local drafts,P1,"Evidence, voice and location captured offline into owner-bound encrypted storage",M3; DEP-08 spike,T-046..T-052 Done,Device test of SQLCipher; queue survival test,M3
M5,Upload and AI rendering (development adapter),P1,Draft uploads with server hash checks; a labelled mock rendering is reviewed and corrected,M4,T-053..T-058 Done (T-059 may remain Blocked),Integration tests,M4
M6,First vertical slice,P1,Authenticate → capture → review rendering → confirm → submit → see the owned report from the backend,M5,T-060..T-064 Done,Vertical-slice evidence record on an Android device,M5,,,,Slice is real end to end except the two labelled adapters
M7,Phase 1 completion features,P1,"Clarification, resolution feedback, notifications, profile, help, accessibility",M6,T-066..T-075 Done,Tests + manual checklists,M6
M8,Phase 1 exit (G3) and submission package,P1,Phase 1 exit report with honest gaps; demonstration package,M7,Exit criteria 1-16 recorded; demo labelled,PHASE1_EXIT_REPORT.md,M7,,,2026-11-01 (SRS target submission),Historical target from SRS v2.1.0 Document Control
M9,"Phase 2: staff authentication, isolation, official reporting",P2,Staff sign in with two factors and one acting role; principals isolated; bundle controls proven,M8,T-081..T-092 Done (T-090 subject to DG-20/21/23),PHASE2_EXIT_REPORT.md,M8
M10,Phase 3: portal workflows,P3,"A report moves through verification, acceptance, assignment, completion, confirmation and closure",M9,T-093..T-105 Done; Blockers decided,Workflow tests WF-02..WF-23,M9
M11,"Operations, release and pilot readiness",Ops,"Environments, backups, procedures and approvals in place before any real data",M8 for demo; M10 for pilot,T-107..T-114 Done,Rehearsal and approval records,M8,,,"2026-10-10 (pilot-scope.md target, superseded)",See DG-04
